# Cronograma SISPPAFUT

Schedule from MS Project, 2012-03-19 to 2012-12-06, A marks actual dates.

## Calendars

- Calendario SISPPAFUT: Mon-Fri 09:00-13:00, 15:00-19:00; Sat-Sun off. Exceptions (off unless hours are given): 2012-03-21 to 2012-12-07 (recurring), 2012-05-07 to 2012-05-11, 2012-07-02 to 2012-07-08, 2012-07-09 09:00-13:00, 15:00-19:00, 2012-07-10 to 2012-08-12, 2012-08-13 to 2012-08-14 09:00-13:00, 15:00-19:00, 2012-08-15 to 2012-08-17, 2012-08-25 09:00-13:00, 15:00-19:00, 2012-09-01 09:00-13:00, 15:00-19:00, 2012-09-08 09:00-13:00, 15:00-19:00, 2012-10-05 to 2012-10-06 09:00-13:00, 15:00-19:00, 2012-10-12 to 2012-10-14 09:00-13:00, 15:00-19:00, 2012-10-20 09:00-13:00, 15:00-19:00, 2012-11-03 09:00-13:00, 15:00-19:00, 2012-11-10 09:00-13:00, 15:00-19:00.

## Resources

| Resource |
| --- |
| Michael Martínez |
| Rodolfo Cordero |
| Analista QA |
| Renzo Martínez |
| Milagros Cruz |
| No asignado |
| David Mauricio |
| Gerente de Software Factory |
| Maestro del Sistema |

## Schedule

| ID | WBS | Task | Type | Duration | Start | Finish | Predecessors | Complete | Remaining | Total slack | Constraint | Resources | Work | Actual work |
| --- | --- | --- | --- | --- | --- | --- | --- | --- | --- | --- | --- | --- | --- | --- |
| 1 | 1 | **Sistema Inteligente para Pronósticos de Partidos de Fútbol** |  | 104d | 2012-03-19 A | 2012-12-06 |  | 98% | 2.52d | 0d |  |  | 1158.4h | 1134.4h |
| 2 | 1.1 | **Planificación** |  | 1d | 2012-03-19 A | 2012-03-19 A |  | 100% |  |  |  |  | 8h | 8h |
| 3 | 1.1.1 | Elaboraración del Glosario |  | 1d | 2012-03-19 A | 2012-03-19 A |  | 100% |  |  |  | Michael Martínez | 8h | 8h |
| 4 | 1.2 | **Reunión de Asesoria/Cliente** |  | 1d | 2012-03-20 A | 2012-03-20 A |  | 100% |  |  |  |  | 8h | 8h |
| 5 | 1.2.1 | Revisión de avances |  | 0.5d | 2012-03-20 A | 2012-03-20 A | 3 | 100% |  |  |  | Michael Martínez | 4h | 4h |
| 6 | 1.2.2 | Asignación de nuevas actividades |  | 0.5d | 2012-03-20 A | 2012-03-20 A | 5 | 100% |  |  |  | David Mauricio | 4h | 4h |
| 7 | 1.2.3 | Elaboración de Acta de Reunión | milestone | 0d | 2012-03-20 A | 2012-03-20 A | 6 | 100% |  |  |  | Michael Martínez |  |  |
| 8 | 1.2.4 | Firma de acuerdo del acta de reunión | milestone | 0d | 2012-03-20 A | 2012-03-20 A | 7 | 100% |  |  |  | David Mauricio |  |  |
| 9 | 1.3 | **Product Backlog** |  | 0.6d | 2012-03-20 A | 2012-03-20 A |  | 100% |  |  |  |  | 4.8h | 4.8h |
| 10 | 1.3.1 | Creación de User Stories |  | 0.5d | 2012-03-20 A | 2012-03-20 A | 8 | 100% |  |  | start no earlier than 2012-03-20 | Michael Martínez | 4h | 4h |
| 11 | 1.3.2 | Priorización de User Stories |  | 0.1d | 2012-03-20 A | 2012-03-20 A | 10 | 100% |  |  | start no earlier than 2012-03-20 | Michael Martínez | 0.8h | 0.8h |
| 12 | 1.4 | **Planificación de los Sprints** |  | 0.4d | 2012-03-20 A | 2012-03-20 A |  | 100% |  |  |  |  | 3.2h | 3.2h |
| 13 | 1.4.1 | Determinar Sprints |  | 0.1d | 2012-03-20 A | 2012-03-20 A | 11 | 100% |  |  |  | Michael Martínez | 0.8h | 0.8h |
| 14 | 1.4.2 | Determinar los Sprints Backlog |  | 0.1d | 2012-03-20 A | 2012-03-20 A | 13 | 100% |  |  | start no earlier than 2012-03-20 | Michael Martínez | 0.8h | 0.8h |
| 15 | 1.4.3 | Determinar duración de cada Sprint |  | 0.1d | 2012-03-20 A | 2012-03-20 A | 14 | 100% |  |  |  | Michael Martínez | 0.8h | 0.8h |
| 16 | 1.4.4 | Determinar Releases |  | 0.1d | 2012-03-20 A | 2012-03-20 A | 15 | 100% |  |  |  | Michael Martínez | 0.8h | 0.8h |
| 17 | 1.5 | **Construcción** |  | 12d | 2012-03-22 A | 2012-04-17 A |  | 100% |  |  |  |  | 65.6h | 65.6h |
| 18 | 1.5.1 | Envío de Contrato a Software Factory | milestone | 0d | 2012-03-22 A | 2012-03-22 A | 16 | 100% |  |  |  | Michael Martínez |  |  |
| 19 | 1.5.2 | Aprobación de Contrato por Software Factory | milestone | 0d | 2012-03-26 A | 2012-03-26 A | 18 | 100% |  |  |  | Gerente de Software Factory |  |  |
| 20 | 1.5.3 | **Sprint 1** |  | 11d | 2012-03-26 A | 2012-04-17 A |  | 100% |  |  |  |  | 65.6h | 65.6h |
| 21 | 1.5.3.1 | US001 |  | 1d | 2012-03-26 A | 2012-03-26 A | 19 | 100% |  |  | start no earlier than 2012-03-26 | Renzo Martínez | 8h | 8h |
| 22 | 1.5.3.2 | US004 |  | 1d | 2012-03-27 A | 2012-03-27 A | 21 | 100% |  |  |  | Renzo Martínez | 8h | 8h |
| 23 | 1.5.3.3 | US007 |  | 1d | 2012-03-29 A | 2012-03-29 A | 22 | 100% |  |  |  | Renzo Martínez | 8h | 8h |
| 24 | 1.5.3.4 | US009 |  | 1d | 2012-04-02 A | 2012-04-02 A | 23 | 100% |  |  |  | Rodolfo Cordero | 8h | 8h |
| 25 | 1.5.3.5 | US014 |  | 1d | 2012-04-03 A | 2012-04-03 A | 24 | 100% |  |  |  | Rodolfo Cordero | 8h | 8h |
| 26 | 1.5.3.6 | US017 |  | 1d | 2012-04-05 A | 2012-04-05 A | 25 | 100% |  |  |  | Rodolfo Cordero | 8h | 8h |
| 27 | 1.5.3.7 | Revisión por pares |  | 1d | 2012-04-09 A | 2012-04-09 A | 26 | 100% |  |  |  | Michael Martínez | 8h | 8h |
| 28 | 1.5.3.8 | Ejecución de integración |  | 0.2d | 2012-04-10 A | 2012-04-10 A | 27 | 100% |  |  | start no earlier than 2012-04-19 | Michael Martínez | 1.6h | 1.6h |
| 29 | 1.5.3.9 | Envío de Sprint 1 a QA | milestone | 0d | 2012-04-10 A | 2012-04-10 A | 28 | 100% |  |  |  | Michael Martínez |  |  |
| 30 | 1.5.3.10 | Recepción de observaciones por QA | milestone | 0d | 2012-04-17 A | 2012-04-17 A | 29 | 100% |  |  | start no earlier than 2012-04-17 | Analista QA |  |  |
| 31 | 1.5.3.11 | Corrección de observaciones |  | 1d | 2012-04-17 A | 2012-04-17 A | 30 | 100% |  |  |  | Michael Martínez | 8h | 8h |

| ID | WBS | Task | Type | Duration | Start | Finish | Predecessors | Complete | Constraint | Resources | Work | Actual work |
| --- | --- | --- | --- | --- | --- | --- | --- | --- | --- | --- | --- | --- |
| 32 | 1.6 | **Reunión de Asesoría/Cliente** |  | 1d | 2012-04-18 A | 2012-04-19 A |  | 100% |  |  | 8h | 8h |
| 33 | 1.6.1 | Revisión de avances |  | 0.5d | 2012-04-18 A | 2012-04-19 A | 31 | 100% |  | Michael Martínez | 4h | 4h |
| 34 | 1.6.2 | Asignación de nuevas actividades |  | 0.5d | 2012-04-18 A | 2012-04-19 A | 33 | 100% |  | David Mauricio | 4h | 4h |
| 35 | 1.6.3 | Elaboración de Acta de Reunión | milestone | 0d | 2012-04-18 A | 2012-04-18 A | 34 | 100% |  | Michael Martínez |  |  |
| 36 | 1.6.4 | Firma de acta de reunión | milestone | 0d | 2012-04-18 A | 2012-04-18 A | 35 | 100% |  | David Mauricio |  |  |
| 37 | 1.7 | Envío de Memoria del Proyecto a Gerencia |  | 1d | 2012-04-19 A | 2012-04-19 A |  | 100% | start no earlier than 2012-04-19 | Michael Martínez | 8h | 8h |
| 38 | 1.8 | **Construcción** |  | 13d | 2012-04-05 A | 2012-05-14 A |  | 100% |  |  | 89.6h | 89.6h |
| 39 | 1.8.1 | Envío de Contrato a Software Factory | milestone | 0d | 2012-04-05 A | 2012-04-05 A | 26 | 100% |  | Michael Martínez |  |  |
| 40 | 1.8.2 | Aprobación de Contrato por Software Factory | milestone | 0d | 2012-04-09 A | 2012-04-09 A | 39 | 100% |  | Gerente de Software Factory |  |  |
| 41 | 1.8.3 | **Sprint 2** |  | 13d | 2012-04-09 A | 2012-05-14 A |  | 100% |  |  | 89.6h | 89.6h |
| 42 | 1.8.3.1 | US002 |  | 1d | 2012-04-09 A | 2012-04-09 A | 40 | 100% |  | Rodolfo Cordero | 8h | 8h |
| 43 | 1.8.3.2 | US005 |  | 1d | 2012-04-10 A | 2012-04-10 A | 42 | 100% |  | Renzo Martínez | 8h | 8h |
| 44 | 1.8.3.3 | US011 |  | 1d | 2012-04-12 A | 2012-04-12 A | 43 | 100% |  | Rodolfo Cordero | 8h | 8h |
| 45 | 1.8.3.4 | US015 |  | 1.5d | 2012-04-16 A | 2012-04-17 A | 44 | 100% |  | Rodolfo Cordero | 12h | 12h |
| 46 | 1.8.3.5 | US018 |  | 1.5d | 2012-04-17 A | 2012-04-19 A | 45 | 100% |  | Rodolfo Cordero | 12h | 12h |
| 47 | 1.8.3.6 | US020 |  | 1.5d | 2012-04-23 A | 2012-04-24 A | 46 | 100% |  | Renzo Martínez | 12h | 12h |
| 48 | 1.8.3.7 | US026 |  | 1.5d | 2012-04-24 A | 2012-04-26 A | 47 | 100% |  | Renzo Martínez | 12h | 12h |
| 49 | 1.8.3.8 | Revisión por pares |  | 1d | 2012-04-30 A | 2012-04-30 A | 48 | 100% |  | Michael Martínez | 8h | 8h |
| 50 | 1.8.3.9 | Ejecución de integración |  | 0.2d | 2012-05-01 A | 2012-05-01 A | 49 | 100% |  | Michael Martínez | 1.6h | 1.6h |
| 51 | 1.8.3.10 | Envío de Sprint 2 a QA | milestone | 0d | 2012-05-01 A | 2012-05-01 A | 50 | 100% |  | Michael Martínez |  |  |
| 52 | 1.8.3.11 | Recepción de observaciones por QA | milestone | 0d | 2012-05-14 A | 2012-05-14 A | 51 | 100% | start no earlier than 2012-05-14 | Analista QA |  |  |
| 53 | 1.8.3.12 | Corrección de observaciones |  | 1d | 2012-05-14 A | 2012-05-14 A | 52 | 100% |  | Michael Martínez | 8h | 8h |
| 54 | 1.9 | **Reunión de Asesoría/Cliente** |  | 0.5d | 2012-05-15 A | 2012-05-15 A |  | 100% |  |  | 8h | 8h |
| 55 | 1.9.1 | Revisión de avances |  | 0.5d | 2012-05-15 A | 2012-05-15 A | 53 | 100% |  | Michael Martínez | 4h | 4h |
| 56 | 1.9.2 | Asignación de nuevas actividades |  | 0.5d | 2012-05-15 A | 2012-05-15 A | 55 | 100% |  | David Mauricio | 4h | 4h |
| 57 | 1.9.3 | Elaboración de Acta de Reunión | milestone | 0d | 2012-05-15 A | 2012-05-15 A | 56 | 100% |  | Michael Martínez |  |  |
| 58 | 1.9.4 | Firma de acuerdo de Acta de Reunión | milestone | 0d | 2012-05-15 A | 2012-05-15 A | 57 | 100% |  | David Mauricio |  |  |

| ID | WBS | Task | Type | Duration | Start | Finish | Predecessors | Complete | Constraint | Resources | Work | Actual work |
| --- | --- | --- | --- | --- | --- | --- | --- | --- | --- | --- | --- | --- |
| 59 | 1.10 | **Construcción** |  | 15.7d | 2012-04-26 A | 2012-06-11 A |  | 100% |  |  | 125.6h | 125.6h |
| 60 | 1.10.1 | Envío de Contrato a Software Factory | milestone | 0d | 2012-04-26 A | 2012-04-26 A | 48 | 100% |  | Michael Martínez |  |  |
| 61 | 1.10.2 | Aprobación de Contrato por Software Factory | milestone | 0d | 2012-04-30 A | 2012-04-30 A | 60 | 100% |  | Gerente de Software Factory |  |  |
| 62 | 1.10.3 | **Sprint 3** |  | 15.7d | 2012-04-30 A | 2012-06-11 A |  | 100% |  |  | 125.6h | 125.6h |
| 63 | 1.10.3.1 | US008 |  | 0.5d | 2012-04-30 A | 2012-04-30 A | 61 | 100% |  | Rodolfo Cordero | 4h | 4h |
| 64 | 1.10.3.2 | US012 |  | 0.5d | 2012-04-30 A | 2012-04-30 A | 63 | 100% |  | Rodolfo Cordero | 4h | 4h |
| 65 | 1.10.3.3 | US049 |  | 1d | 2012-05-01 A | 2012-05-01 A | 64 | 100% |  | Renzo Martínez | 8h | 8h |
| 66 | 1.10.3.4 | US021 |  | 0.5d | 2012-05-03 A | 2012-05-03 A | 65 | 100% |  | Renzo Martínez | 4h | 4h |
| 67 | 1.10.3.5 | US028 |  | 1d | 2012-05-03 A | 2012-05-14 A | 66 | 100% |  | Renzo Martínez | 8h | 8h |
| 68 | 1.10.3.6 | US029 |  | 1d | 2012-05-14 A | 2012-05-15 A | 67 | 100% |  | Renzo Martínez | 8h | 8h |
| 69 | 1.10.3.7 | US030 |  | 1d | 2012-05-15 A | 2012-05-17 A | 68 | 100% |  | Renzo Martínez | 8h | 8h |
| 70 | 1.10.3.8 | US032 |  | 1d | 2012-05-17 A | 2012-05-21 A | 69 | 100% |  | Renzo Martínez | 8h | 8h |
| 71 | 1.10.3.9 | US033 |  | 1d | 2012-05-21 A | 2012-05-22 A | 70 | 100% |  | Rodolfo Cordero | 8h | 8h |
| 72 | 1.10.3.10 | US050 |  | 1d | 2012-05-22 A | 2012-05-24 A | 71 | 100% |  | Renzo Martínez | 8h | 8h |
| 73 | 1.10.3.11 | US013 |  | 1d | 2012-05-24 A | 2012-05-28 A | 72 | 100% |  | Rodolfo Cordero | 8h | 8h |
| 74 | 1.10.3.12 | US022 |  | 1d | 2012-05-28 A | 2012-05-29 A | 73 | 100% |  | Rodolfo Cordero | 8h | 8h |
| 75 | 1.10.3.13 | US027 |  | 1d | 2012-05-29 A | 2012-05-31 A | 74 | 100% |  | Rodolfo Cordero | 8h | 8h |
| 76 | 1.10.3.14 | US010 |  | 1d | 2012-05-31 A | 2012-06-04 A | 75 | 100% |  | Rodolfo Cordero | 8h | 8h |
| 77 | 1.10.3.15 | Revisión por pares |  | 2d | 2012-06-04 A | 2012-06-07 A | 76 | 100% |  | Michael Martínez | 16h | 16h |
| 78 | 1.10.3.16 | Ejecución de integración |  | 0.2d | 2012-06-07 A | 2012-06-07 A | 77 | 100% |  | Michael Martínez | 1.6h | 1.6h |
| 79 | 1.10.3.17 | Envío de Sprint 3 a QA | milestone | 0d | 2012-06-07 A | 2012-06-07 A | 78 | 100% |  | Michael Martínez |  |  |
| 80 | 1.10.3.18 | Recepción de observaciones por QA | milestone | 0d | 2012-06-07 A | 2012-06-07 A | 79 | 100% | start no earlier than 2012-06-05 | Analista QA |  |  |
| 81 | 1.10.3.19 | Corrección de observaciones |  | 1d | 2012-06-07 A | 2012-06-11 A | 80 | 100% |  | Michael Martínez | 8h | 8h |
| 82 | 1.11 | **Reunión de Asesoría/Cliente** |  | 0.5d | 2012-06-12 A | 2012-06-12 A |  | 100% |  |  | 8h | 8h |
| 83 | 1.11.1 | Revisión de Avances |  | 0.5d | 2012-06-12 A | 2012-06-12 A | 81 | 100% |  | Michael Martínez | 4h | 4h |
| 84 | 1.11.2 | Asignación de nuevas actividades |  | 0.5d | 2012-06-12 A | 2012-06-12 A | 83 | 100% |  | David Mauricio | 4h | 4h |
| 85 | 1.11.3 | Elaboración de Acta de Reunión | milestone | 0d | 2012-06-12 A | 2012-06-12 A | 84 | 100% |  | Michael Martínez |  |  |
| 86 | 1.11.4 | Firma de acuerdos de Acta de Reunión | milestone | 0d | 2012-06-12 A | 2012-06-12 A | 85 | 100% |  | David Mauricio |  |  |

| ID | WBS | Task | Type | Duration | Start | Finish | Predecessors | Complete | Constraint | Resources | Work | Actual work |
| --- | --- | --- | --- | --- | --- | --- | --- | --- | --- | --- | --- | --- |
| 87 | 1.12 | **Diseño de la Red Neuronal** |  | 2.3d | 2012-06-11 A | 2012-06-14 A |  | 100% |  |  | 18.4h | 18.4h |
| 88 | 1.12.1 | Análisis de las características |  | 1d | 2012-06-11 A | 2012-06-12 A | 81 | 100% | start no earlier than 2012-06-11 | Michael Martínez | 8h | 8h |
| 89 | 1.12.2 | Análisis de los patrones |  | 0.5d | 2012-06-12 A | 2012-06-14 A | 88 | 100% |  | Michael Martínez | 4h | 4h |
| 90 | 1.12.3 | Diseño de la RNA |  | 0.3d | 2012-06-14 A | 2012-06-14 A | 89 | 100% |  | Michael Martínez | 2.4h | 2.4h |
| 91 | 1.12.4 | Envío de la red neuronal a QA | milestone | 0d | 2012-06-14 A | 2012-06-14 A | 90 | 100% |  | Michael Martínez |  |  |
| 92 | 1.12.5 | Recepción de observaciones por QA | milestone | 0d | 2012-06-14 A | 2012-06-14 A | 91 | 100% | start no earlier than 2012-06-18 | Analista QA |  |  |
| 93 | 1.12.6 | Corrección de observaciones |  | 0.5d | 2012-06-14 A | 2012-06-14 A | 92 | 100% |  | Michael Martínez | 4h | 4h |
| 94 | 1.13 | **Reunión de Asesoría/Cliente** |  | 1d | 2012-06-21 A | 2012-06-21 A |  | 100% |  |  | 8h | 8h |
| 95 | 1.13.1 | Revisión de avances |  | 0.5d | 2012-06-21 A | 2012-06-21 A | 93 | 100% | finish no earlier than 2012-06-20 | Michael Martínez | 4h | 4h |
| 96 | 1.13.2 | Asignación de nuevas actividades |  | 0.5d | 2012-06-21 A | 2012-06-21 A | 95 | 100% | finish no earlier than 2012-06-20 | David Mauricio | 4h | 4h |
| 97 | 1.13.3 | Elaboración de Acta de Reunión | milestone | 0d | 2012-06-21 A | 2012-06-21 A | 96 | 100% |  | Michael Martínez |  |  |
| 98 | 1.13.4 | Firma de acuerdos de Acta de Reunión | milestone | 0d | 2012-06-21 A | 2012-06-21 A | 97 | 100% |  | David Mauricio |  |  |
| 99 | 1.14 | Envío de Memoria del Proyecto a Gerencia |  | 1d | 2012-06-21 A | 2012-06-21 A |  | 100% | start no earlier than 2012-06-21 | Michael Martínez | 8h | 8h |
| 100 | 1.15 | Lanzamiento de Release 1 |  | 1d | 2012-06-19 A | 2012-06-21 A | 81 | 100% |  | Michael Martínez | 8h | 8h |
| 101 | 1.16 | Cierre parcial del Producto |  | 1d | 2012-06-21 A | 2012-06-25 A | 100 | 100% |  | Michael Martínez | 8h | 8h |
| 102 | 1.17 | Presentación Finall del Taller de Proyecto 1 |  | 1d | 2012-07-09 A | 2012-07-09 A | 101 | 100% | start no earlier than 2012-07-09 | Michael Martínez | 8h | 8h |
| 103 | 1.18 | **Contrucción** |  | 19.2d | 2012-08-13 A | 2012-09-20 A |  | 100% |  |  | 258.4h | 258.4h |
| 104 | 1.18.1 | Envío de Contrato a Software Factory | milestone | 0d | 2012-08-13 A | 2012-08-13 A |  | 100% | start no earlier than 2012-08-13 | Michael Martínez |  |  |
| 105 | 1.18.2 | Aceptación de Contrato por Software Factory | milestone | 0d | 2012-08-16 A | 2012-08-16 A | 104 | 100% |  | Gerente de Software Factory |  |  |
| 106 | 1.18.3 | **Sprint 4** |  | 17.2d | 2012-08-20 A | 2012-09-20 A | 102 | 100% |  | Michael Martínez | 258.4h | 258.4h |
| 107 | 1.18.3.1 | US034 |  | 1d | 2012-08-20 A | 2012-08-20 A | 105 | 100% | start no earlier than 2012-08-13 | Michael Martínez | 8h | 8h |
| 108 | 1.18.3.2 | US036 |  | 1d | 2012-08-20 A | 2012-08-20 A | 107 | 100% |  | Michael Martínez | 8h | 8h |
| 109 | 1.18.3.3 | US037 |  | 1d | 2012-08-21 A | 2012-08-21 A | 108 | 100% |  | Michael Martínez | 8h | 8h |
| 110 | 1.18.3.4 | US023 |  | 1d | 2012-08-23 A | 2012-08-23 A | 109 | 100% |  | Milagros Cruz | 8h | 8h |
| 111 | 1.18.3.5 | US024 |  | 1d | 2012-08-27 A | 2012-08-27 A | 110 | 100% |  | Milagros Cruz | 8h | 8h |
| 112 | 1.18.3.6 | US035 |  | 1d | 2012-08-28 A | 2012-08-28 A | 111 | 100% |  | Milagros Cruz | 8h | 8h |
| 113 | 1.18.3.7 | US031 |  | 1d | 2012-08-30 A | 2012-08-30 A | 112 | 100% |  | Milagros Cruz | 8h | 8h |
| 114 | 1.18.3.8 | US046 |  | 2d | 2012-09-03 A | 2012-09-04 A | 113 | 100% |  | Michael Martínez | 16h | 16h |
| 115 | 1.18.3.9 | US047 |  | 2d | 2012-09-06 A | 2012-09-08 A | 114 | 100% |  | Michael Martínez | 16h | 16h |
| 116 | 1.18.3.10 | US048 |  | 1d | 2012-09-11 A | 2012-09-11 A | 115 | 100% |  | Michael Martínez | 8h | 8h |
| 117 | 1.18.3.11 | US053 |  | 1d | 2012-09-13 A | 2012-09-13 A | 116 | 100% |  | Milagros Cruz | 8h | 8h |
| 118 | 1.18.3.12 | Revisión por pares |  | 1d | 2012-09-17 A | 2012-09-17 A | 117 | 100% |  | Michael Martínez | 8h | 8h |
| 119 | 1.18.3.13 | Ejecución de integración |  | 0.1d | 2012-09-18 A | 2012-09-18 A | 118 | 100% |  | Michael Martínez | 0.8h | 0.8h |
| 120 | 1.18.3.14 | Envío de Sprint 4 a QA | milestone | 0d | 2012-09-18 A | 2012-09-18 A | 119 | 100% |  | Michael Martínez |  |  |
| 121 | 1.18.3.15 | Recepción de observaciones por QA | milestone | 0d | 2012-09-18 A | 2012-09-18 A | 120 | 100% |  | Analista QA |  |  |
| 122 | 1.18.3.16 | Corrección de observaciones |  | 1d | 2012-09-18 A | 2012-09-20 A | 121 | 100% |  | Michael Martínez | 8h | 8h |

| ID | WBS | Task | Type | Duration | Start | Finish | Predecessors | Complete | Constraint | Resources | Work | Actual work |
| --- | --- | --- | --- | --- | --- | --- | --- | --- | --- | --- | --- | --- |
| 123 | 1.19 | **Reunión de Asesoría/Cliente** |  | 1d | 2012-08-25 A | 2012-08-25 A |  | 100% |  |  | 8h | 8h |
| 124 | 1.19.1 | Presentación de avances |  | 0.5d | 2012-08-25 A | 2012-08-25 A |  | 100% | finish no earlier than 2012-08-25 | Michael Martínez | 4h | 4h |
| 125 | 1.19.2 | Asignación de nuevas actividades |  | 0.5d | 2012-08-25 A | 2012-08-25 A | 124 | 100% | finish no earlier than 2012-08-23 | David Mauricio | 4h | 4h |
| 126 | 1.19.3 | Elaboración de Acta de Reunión | milestone | 0d | 2012-08-25 A | 2012-08-25 A | 125 | 100% | start no earlier than 2012-08-14 | Michael Martínez |  |  |
| 127 | 1.19.4 | Firma de acuerdos de Acta de Reunión | milestone | 0d | 2012-08-25 A | 2012-08-25 A | 126 | 100% | start no earlier than 2012-08-14 | David Mauricio |  |  |
| 128 | 1.20 | **Reunión de Asesoría/Cliente** |  | 1d | 2012-09-01 A | 2012-09-01 A |  | 100% |  |  | 8h | 8h |
| 129 | 1.20.1 | Presentación de avances |  | 0.5d | 2012-09-01 A | 2012-09-01 A |  | 100% | start no earlier than 2012-09-01 | Michael Martínez | 4h | 4h |
| 130 | 1.20.2 | Asignación de nuevas actividades |  | 0.5d | 2012-09-01 A | 2012-09-01 A | 129 | 100% |  | David Mauricio | 4h | 4h |
| 131 | 1.20.3 | Elaboración de Acta de Reunión | milestone | 0d | 2012-09-01 A | 2012-09-01 A | 130 | 100% |  | Michael Martínez |  |  |
| 132 | 1.20.4 | Firma de acuerdos de Acta de Reunión | milestone | 0d | 2012-09-01 A | 2012-09-01 A | 131 | 100% |  | David Mauricio |  |  |
| 133 | 1.21 | **Reunión de Asesoría/Cliente** |  | 1d | 2012-09-08 A | 2012-09-08 A |  | 100% |  |  | 8h | 8h |
| 134 | 1.21.1 | Presentación de avances |  | 0.5d | 2012-09-08 A | 2012-09-08 A |  | 100% | start no earlier than 2012-09-08 | Michael Martínez | 4h | 4h |
| 135 | 1.21.2 | Asignación de nuevas actividades |  | 0.5d | 2012-09-08 A | 2012-09-08 A | 134 | 100% |  | David Mauricio | 4h | 4h |
| 136 | 1.21.3 | Elaboración de Acta de Reunión | milestone | 0d | 2012-09-08 A | 2012-09-08 A | 135 | 100% |  | Michael Martínez |  |  |
| 137 | 1.21.4 | Firma de acuerdos de Acta de Reunión | milestone | 0d | 2012-09-08 A | 2012-09-08 A | 136 | 100% |  | David Mauricio |  |  |
| 138 | 1.22 | **Reunión de Asesoría/Cliente** |  | 1d | 2012-09-17 A | 2012-09-17 A |  | 100% |  |  | 8h | 8h |
| 139 | 1.22.1 | Presentación de avances |  | 0.5d | 2012-09-17 A | 2012-09-17 A | 117 | 100% |  | Michael Martínez | 4h | 4h |
| 140 | 1.22.2 | Asignación de nuevas actividades |  | 0.5d | 2012-09-17 A | 2012-09-17 A | 139 | 100% |  | David Mauricio | 4h | 4h |
| 141 | 1.22.3 | Elaboración de Acta de Reunión | milestone | 0d | 2012-09-17 A | 2012-09-17 A | 140 | 100% |  | Michael Martínez |  |  |
| 142 | 1.22.4 | Firma de acuerdos de Acta de Reunión | milestone | 0d | 2012-09-17 A | 2012-09-17 A | 141 | 100% |  | David Mauricio |  |  |
| 143 | 1.23 | Envío de Memoria del Proyecto a Gerencia |  | 0.5d | 2012-09-17 A | 2012-09-17 A |  | 100% | start no earlier than 2012-09-17 | Michael Martínez | 4h | 4h |
| 144 | 1.24 | Envío de Paper del Proyecto a Gerencia |  | 0.5d | 2012-09-17 A | 2012-09-17 A |  | 100% | start no earlier than 2012-09-17 | Michael Martínez | 4h | 4h |
| 145 | 1.25 | **Construcción** |  | 22d | 2012-09-13 A | 2012-10-22 A |  | 100% |  |  | 104h | 104h |
| 146 | 1.25.1 | Envío de Contrato a Software Factory | milestone | 0d | 2012-09-13 A | 2012-09-13 A | 117 | 100% | start no earlier than 2012-09-17 | Michael Martínez |  |  |
| 147 | 1.25.2 | Aprobación de Contrato por Software Factory | milestone | 0d | 2012-09-17 A | 2012-09-17 A | 146 | 100% |  | Gerente de Software Factory |  |  |

| ID | WBS | Task | Type | Duration | Start | Finish | Predecessors | Complete | Constraint | Resources | Work | Actual work |
| --- | --- | --- | --- | --- | --- | --- | --- | --- | --- | --- | --- | --- |
| 148 | 1.25.3 | **Sprint 5** |  | 21d | 2012-09-17 A | 2012-10-22 A |  | 100% |  |  | 104h | 104h |
| 149 | 1.25.3.1 | US045 |  | 1d | 2012-09-17 A | 2012-09-17 A | 147 | 100% |  | Milagros Cruz | 8h | 8h |
| 150 | 1.25.3.2 | US055 |  | 2d | 2012-09-18 A | 2012-09-20 A | 149 | 100% |  | Milagros Cruz | 16h | 16h |
| 151 | 1.25.3.3 | US051 |  | 1d | 2012-09-24 A | 2012-09-24 A | 150 | 100% |  | Rodolfo Cordero | 8h | 8h |
| 152 | 1.25.3.4 | US052 |  | 2d | 2012-09-25 A | 2012-09-27 A | 151 | 100% |  | Rodolfo Cordero | 16h | 16h |
| 153 | 1.25.3.5 | US054 |  | 4d | 2012-10-01 A | 2012-10-15 A | 152 | 100% |  | Milagros Cruz | 32h | 32h |
| 154 | 1.25.3.6 | Revisión por pares |  | 2d | 2012-10-16 A | 2012-10-18 A | 153 | 100% |  | Michael Martínez | 16h | 16h |
| 155 | 1.25.3.7 | Ejecución de integración | milestone | 0d | 2012-10-18 A | 2012-10-18 A | 154 | 100% |  | Michael Martínez |  |  |
| 156 | 1.25.3.8 | Envío de Sprint 5 a QA | milestone | 0d | 2012-10-18 A | 2012-10-18 A | 155 | 100% |  | Michael Martínez |  |  |
| 157 | 1.25.3.9 | Recepción de observaciones por QA | milestone | 0d | 2012-10-20 A | 2012-10-20 A | 156 | 100% |  | Analista QA |  |  |
| 158 | 1.25.3.10 | Corrección de observaciones |  | 1d | 2012-10-20 A | 2012-10-20 A | 157 | 100% |  | Michael Martínez | 8h | 8h |
| 159 | 1.25.3.11 | Envío 2 de Sprint 5 a QA | milestone | 0d | 2012-10-22 A | 2012-10-22 A | 158 | 100% |  | Michael Martínez |  |  |
| 160 | 1.25.3.12 | Envío de observaciones o cierre por QA | milestone | 0d | 2012-10-22 A | 2012-10-22 A | 159 | 100% |  | Analista QA |  |  |
| 161 | 1.25.3.13 | Recepción de observaciones o cierre por QA | milestone | 0d | 2012-10-22 A | 2012-10-22 A | 160 | 100% |  | Michael Martínez |  |  |
| 162 | 1.25.3.14 | Cierre de Sprint 5 | milestone | 0d | 2012-10-22 A | 2012-10-22 A | 161 | 100% |  | Michael Martínez |  |  |
| 163 | 1.26 | **Carga de Data** |  | 4d | 2012-09-20 A | 2012-10-01 A |  | 100% |  |  | 32h | 32h |
| 164 | 1.26.1 | Carga de data para entrenamiento |  | 4d | 2012-09-20 A | 2012-10-01 A | 122 | 100% | start no earlier than 2012-09-18 | Michael Martínez | 32h | 32h |
| 165 | 1.27 | **Entrenamiento** |  | 1d | 2012-10-01 A | 2012-10-02 A |  | 100% |  |  | 5.6h | 5.6h |
| 166 | 1.27.1 | Seleccionar instancias de prueba |  | 0.1d | 2012-10-01 A | 2012-10-01 A | 164 | 100% |  | Michael Martínez | 0.8h | 0.8h |
| 167 | 1.27.2 | Normalizar las instancias de prueba |  | 0.1d | 2012-10-01 A | 2012-10-01 A | 166 | 100% |  | Michael Martínez | 0.8h | 0.8h |
| 168 | 1.27.3 | Probar diversos modelos de predicción |  | 0.3d | 2012-10-01 A | 2012-10-01 A | 167 | 100% |  | Michael Martínez | 2.4h | 2.4h |
| 169 | 1.27.4 | Seleccionar mejor modelo de predicción |  | 0.2d | 2012-10-02 A | 2012-10-02 A | 168 | 100% |  | Michael Martínez | 1.6h | 1.6h |
| 170 | 1.28 | **Reunión con Maestro del sistema** |  | 1d | 2012-10-05 A | 2012-10-05 A |  | 100% |  |  | 8h | 8h |
| 171 | 1.28.1 | Presentación de resultados del entrenamiento |  | 0.5d | 2012-10-05 A | 2012-10-05 A | 168 | 100% | start no earlier than 2012-10-05 | Michael Martínez | 4h | 4h |
| 172 | 1.28.2 | Opinión del maestro del sistema |  | 0.5d | 2012-10-05 A | 2012-10-05 A | 171 | 100% |  | Maestro del Sistema | 4h | 4h |
| 173 | 1.28.3 | Elaboración de Acta de Reunión | milestone | 0d | 2012-10-05 A | 2012-10-05 A | 172 | 100% |  | Michael Martínez |  |  |
| 174 | 1.28.4 | Firma de Acta de Reunión | milestone | 0d | 2012-10-05 A | 2012-10-05 A | 173 | 100% |  | Maestro del Sistema |  |  |

| ID | WBS | Task | Type | Duration | Start | Finish | Predecessors | Complete | Constraint | Resources | Work | Actual work |
| --- | --- | --- | --- | --- | --- | --- | --- | --- | --- | --- | --- | --- |
| 175 | 1.29 | **Reunión con Maestro del sistema** |  | 1d | 2012-10-06 A | 2012-10-06 A |  | 100% |  |  | 8h | 8h |
| 176 | 1.29.1 | Presentación de resultados del entrenamiento |  | 0.5d | 2012-10-06 A | 2012-10-06 A | 168 | 100% | start no earlier than 2012-10-06 | Michael Martínez | 4h | 4h |
| 177 | 1.29.2 | Opinión del maestro del sistema |  | 0.5d | 2012-10-06 A | 2012-10-06 A | 176 | 100% |  | Maestro del Sistema | 4h | 4h |
| 178 | 1.29.3 | Elaboración de Acta de Reunión | milestone | 0d | 2012-10-06 A | 2012-10-06 A | 177 | 100% |  | Michael Martínez |  |  |
| 179 | 1.29.4 | Firma de Acta de Reunión | milestone | 0d | 2012-10-06 A | 2012-10-06 A | 178 | 100% |  | Maestro del Sistema |  |  |
| 180 | 1.30 | **Reunión con Maestro del sistema** |  | 0d | 2012-10-12 A | 2012-10-12 A |  | 100% |  |  |  |  |
| 181 | 1.30.1 | Presentación de resultados del entrenamiento | milestone | 0d | 2012-10-12 A | 2012-10-12 A | 168 | 100% | start no earlier than 2012-10-12 | Michael Martínez |  |  |
| 182 | 1.30.2 | Opinión del maestro del sistema | milestone | 0d | 2012-10-12 A | 2012-10-12 A | 181 | 100% |  | Maestro del Sistema |  |  |
| 183 | 1.30.3 | Elaboración de Acta de Reunión | milestone | 0d | 2012-10-12 A | 2012-10-12 A | 182 | 100% |  | Michael Martínez |  |  |
| 184 | 1.30.4 | Firma de Acta de Reunión | milestone | 0d | 2012-10-12 A | 2012-10-12 A | 183 | 100% |  | Maestro del Sistema |  |  |
| 185 | 1.31 | **Reunión con Maestro del sistema** |  | 0d | 2012-10-13 A | 2012-10-13 A |  | 100% |  |  |  |  |
| 186 | 1.31.1 | Presentación de resultados del entrenamiento | milestone | 0d | 2012-10-13 A | 2012-10-13 A | 168 | 100% | start no earlier than 2012-10-13 | Michael Martínez |  |  |
| 187 | 1.31.2 | Opinión del maestro del sistema | milestone | 0d | 2012-10-13 A | 2012-10-13 A | 186 | 100% |  | Maestro del Sistema |  |  |
| 188 | 1.31.3 | Elaboración de Acta de Reunión | milestone | 0d | 2012-10-13 A | 2012-10-13 A | 187 | 100% |  | Michael Martínez |  |  |
| 189 | 1.31.4 | Firma de Acta de Reunión | milestone | 0d | 2012-10-13 A | 2012-10-13 A | 188 | 100% |  | Maestro del Sistema |  |  |
| 190 | 1.32 | **Reunión con Maestro del sistema** |  | 1d | 2012-10-14 A | 2012-10-14 A |  | 100% |  |  | 8h | 8h |
| 191 | 1.32.1 | Presentación de resultados del entrenamiento |  | 0.5d | 2012-10-14 A | 2012-10-14 A | 168 | 100% | start no earlier than 2012-10-14 | Michael Martínez | 4h | 4h |
| 192 | 1.32.2 | Opinión del maestro del sistema |  | 0.5d | 2012-10-14 A | 2012-10-14 A | 191 | 100% |  | Maestro del Sistema | 4h | 4h |
| 193 | 1.32.3 | Elaboración de Acta de Reunión | milestone | 0d | 2012-10-14 A | 2012-10-14 A | 192 | 100% |  | Michael Martínez |  |  |
| 194 | 1.32.4 | Firma de Acta de Reunión | milestone | 0d | 2012-10-14 A | 2012-10-14 A | 193 | 100% |  | Maestro del Sistema |  |  |
| 195 | 1.33 | **Reunión de Asesoría/Cliente** |  | 1d | 2012-10-20 A | 2012-10-20 A |  | 100% |  |  | 8h | 8h |
| 196 | 1.33.1 | Presentación de avances |  | 0.5d | 2012-10-20 A | 2012-10-20 A | 153 | 100% | start no earlier than 2012-10-20 | Michael Martínez | 4h | 4h |
| 197 | 1.33.2 | Asignación de nuevas actividades |  | 0.5d | 2012-10-20 A | 2012-10-20 A | 196 | 100% |  | David Mauricio | 4h | 4h |
| 198 | 1.33.3 | Elaboración de Acta de Reunión | milestone | 0d | 2012-10-20 A | 2012-10-20 A | 197 | 100% |  | Michael Martínez |  |  |
| 199 | 1.33.4 | Firma de acuerdos de Acta de Reunión | milestone | 0d | 2012-10-20 A | 2012-10-20 A | 198 | 100% |  | David Mauricio |  |  |

| ID | WBS | Task | Type | Duration | Start | Finish | Predecessors | Complete | Constraint | Resources | Work | Actual work |
| --- | --- | --- | --- | --- | --- | --- | --- | --- | --- | --- | --- | --- |
| 200 | 1.34 | **Carga de Data** |  | 23d | 2012-10-04 A | 2012-11-08 A |  | 100% |  |  | 120h | 120h |
| 201 | 1.34.1 | Carga de data para validación de sistemas inteligentes |  | 15d | 2012-10-04 A | 2012-11-08 A | 169 | 100% | finish no earlier than 2012-11-08 | Michael Martínez | 120h | 120h |
| 202 | 1.35 | **Construcción** |  | 6d | 2012-10-18 A | 2012-10-29 A |  | 100% |  |  | 64h | 64h |
| 203 | 1.35.1 | Envío de Contrato a Software Factory | milestone | 0d | 2012-10-18 A | 2012-10-18 A | 153 | 100% | start no earlier than 2012-10-18 | Michael Martínez |  |  |
| 204 | 1.35.2 | Aprobación de Contrato por Software Factory | milestone | 0d | 2012-10-18 A | 2012-10-18 A | 203 | 100% |  | Gerente de Software Factory |  |  |
| 205 | 1.35.3 | **Sprint 6** |  | 4d | 2012-10-22 A | 2012-10-29 A | 204 | 100% |  | Michael Martínez | 64h | 64h |
| 206 | 1.35.3.1 | US038 |  | 0.34d | 2012-10-22 A | 2012-10-22 A | 204 | 100% | start no earlier than 2012-10-22 | Milagros Cruz | 2.72h | 2.72h |
| 207 | 1.35.3.2 | US039 |  | 0.33d | 2012-10-22 A | 2012-10-22 A | 206 | 100% |  | Milagros Cruz | 2.64h | 2.64h |
| 208 | 1.35.3.3 | US040 |  | 0.33d | 2012-10-22 A | 2012-10-22 A | 207 | 100% |  | Milagros Cruz | 2.64h | 2.64h |
| 209 | 1.35.3.4 | Revisión por pares |  | 1d | 2012-10-23 A | 2012-10-23 A | 208 | 100% |  | Michael Martínez | 8h | 8h |
| 210 | 1.35.3.5 | Ejecución de integración | milestone | 0d | 2012-10-23 A | 2012-10-23 A | 209 | 100% |  | Michael Martínez |  |  |
| 211 | 1.35.3.6 | Envío de Sprint 6 a QA | milestone | 0d | 2012-10-23 A | 2012-10-23 A | 210 | 100% |  | Michael Martínez |  |  |
| 212 | 1.35.3.7 | Envío de observaciones por QA | milestone | 0d | 2012-10-23 A | 2012-10-23 A | 211 | 100% |  | Analista QA |  |  |
| 213 | 1.35.3.8 | Recepción de observaciones de QA | milestone | 0d | 2012-10-23 A | 2012-10-23 A | 212 | 100% |  | Michael Martínez |  |  |
| 214 | 1.35.3.9 | Corrección de Observaciones |  | 1d | 2012-10-25 A | 2012-10-25 A | 213 | 100% |  | Michael Martínez | 8h | 8h |
| 215 | 1.35.3.10 | Envío 2 de Sprint 6 a QA | milestone | 0d | 2012-10-25 A | 2012-10-25 A | 214 | 100% |  | Michael Martínez |  |  |
| 216 | 1.35.3.11 | Envío de observaciones o cierre por QA | milestone | 0d | 2012-10-25 A | 2012-10-25 A | 215 | 100% |  | Analista QA |  |  |
| 217 | 1.35.3.12 | Recepción de observaciones o cierre de QA | milestone | 0d | 2012-10-25 A | 2012-10-25 A | 216 | 100% |  | Michael Martínez |  |  |
| 218 | 1.35.3.13 | Corrección de Observaciones |  | 1d | 2012-10-29 A | 2012-10-29 A | 217 | 100% |  | Michael Martínez | 8h | 8h |
| 219 | 1.35.3.14 | Cierre de Sprint 6 | milestone | 0d | 2012-10-29 A | 2012-10-29 A | 218 | 100% |  | Michael Martínez |  |  |
| 220 | 1.36 | **Reunión de Asesoría/Cliente** |  | 1d | 2012-10-30 A | 2012-10-30 A |  | 100% |  |  | 8h | 8h |
| 221 | 1.36.1 | Presentación de avances |  | 0.5d | 2012-10-30 A | 2012-10-30 A | 219 | 100% | start no earlier than 2012-10-16 | Michael Martínez | 4h | 4h |
| 222 | 1.36.2 | Asignación de nuevas actividades |  | 0.5d | 2012-10-30 A | 2012-10-30 A | 221 | 100% | start no earlier than 2012-09-18 | David Mauricio | 4h | 4h |
| 223 | 1.36.3 | Elaboración de Acta de Reunión | milestone | 0d | 2012-10-30 A | 2012-10-30 A | 222 | 100% | start no earlier than 2012-09-18 | Michael Martínez |  |  |
| 224 | 1.36.4 | Firma de acuerdos de Acta de Reunión | milestone | 0d | 2012-10-30 A | 2012-10-30 A | 223 | 100% | start no earlier than 2012-09-18 | David Mauricio |  |  |
| 225 | 1.37 | Elaboración de Perfil de Tesis |  | 1d | 2012-11-01 A | 2012-11-01 A |  | 100% | start no earlier than 2012-11-01 | Michael Martínez | 8h | 8h |

| ID | WBS | Task | Type | Duration | Start | Finish | Predecessors | Complete | Total slack | Free slack | Constraint | Resources | Work | Actual work |
| --- | --- | --- | --- | --- | --- | --- | --- | --- | --- | --- | --- | --- | --- | --- |
| 226 | 1.38 | **Reunión de Asesoría/Cliente** |  | 1d | 2012-11-03 A | 2012-11-03 A |  | 100% |  |  |  |  | 8h | 8h |
| 227 | 1.38.1 | Presentación de avances y revisión de Perfil de Tesis |  | 0.5d | 2012-11-03 A | 2012-11-03 A | 225 | 100% |  |  | start no earlier than 2012-11-03 | Michael Martínez | 4h | 4h |
| 228 | 1.38.2 | Asignación de nuevas actividades |  | 0.5d | 2012-11-03 A | 2012-11-03 A | 227 | 100% |  |  |  | David Mauricio | 4h | 4h |
| 229 | 1.38.3 | Elaboración de Acta de Reunión | milestone | 0d | 2012-11-03 A | 2012-11-03 A | 228 | 100% |  |  |  | Michael Martínez |  |  |
| 230 | 1.38.4 | Firma de acuerdos de Acta de Reunión | milestone | 0d | 2012-11-03 A | 2012-11-03 A | 229 | 100% |  |  |  | David Mauricio |  |  |
| 231 | 1.39 | **Reunión de Asesoría/Cliente** |  | 1.5d | 2012-11-10 A | 2012-11-12 A |  | 100% |  |  |  |  | 8h | 8h |
| 232 | 1.39.1 | Presentación de avances |  | 0.5d | 2012-11-10 A | 2012-11-10 A | 201 | 100% |  |  | start no earlier than 2012-11-10 | Michael Martínez | 4h | 4h |
| 233 | 1.39.2 | Asignación de nuevas actividades |  | 0.5d | 2012-11-12 A | 2012-11-12 A | 232 | 100% |  |  | start no earlier than 2012-11-12 | David Mauricio | 4h | 4h |
| 234 | 1.39.3 | Elaboración de Acta de Reunión | milestone | 0d | 2012-11-12 A | 2012-11-12 A | 233 | 100% |  |  | start no earlier than 2012-11-12 | Michael Martínez |  |  |
| 235 | 1.39.4 | Firma de acuerdos de Acta de Reunión | milestone | 0d | 2012-11-12 A | 2012-11-12 A | 234 | 100% |  |  | start no earlier than 2012-11-12 | David Mauricio |  |  |
| 236 | 1.40 | **Validación de Sistemas Inteligentes** |  | 3.4d | 2012-11-10 A | 2012-11-15 A |  | 100% |  |  |  |  | 27.2h | 27.2h |
| 237 | 1.40.1 | Seleccionar instancias de validación |  | 0.2d | 2012-11-10 A | 2012-11-10 A | 201 | 100% |  |  |  | Michael Martínez | 1.6h | 1.6h |
| 238 | 1.40.2 | Normalizar las instancias de validación |  | 0.2d | 2012-11-10 A | 2012-11-10 A | 237 | 100% |  |  |  | Michael Martínez | 1.6h | 1.6h |
| 239 | 1.40.3 | Validación y verificación de Sistemas Inteligentes |  | 3d | 2012-11-10 A | 2012-11-15 A | 238 | 100% |  |  |  | Michael Martínez | 24h | 24h |
| 240 | 1.41 | Envío de Perfil de Tésis a Gerencia |  | 0.5d | 2012-11-15 A | 2012-11-15 A |  | 100% |  |  | start no earlier than 2012-11-15 | Michael Martínez | 4h | 4h |
| 241 | 1.42 | Envío de Paper del Proyecto a Gerencia |  | 0.5d | 2012-11-15 A | 2012-11-15 A |  | 100% |  |  | start no earlier than 2012-11-15 | Michael Martínez | 4h | 4h |
| 242 | 1.43 | **Reunión de Asesoría/Cliente** |  | 1d | 2012-11-13 A | 2012-11-13 A |  | 100% |  |  |  |  | 8h | 8h |
| 243 | 1.43.1 | Presentación de avances |  | 0.5d | 2012-11-13 A | 2012-11-13 A |  | 100% |  |  | start no earlier than 2012-11-13 | Michael Martínez | 4h | 4h |
| 244 | 1.43.2 | Firma de Criterios de Aceptación del Producto |  | 0.5d | 2012-11-13 A | 2012-11-13 A | 243 | 100% |  |  |  | David Mauricio | 4h | 4h |
| 245 | 1.43.3 | Elaboración de Acta de Reunión | milestone | 0d | 2012-11-13 A | 2012-11-13 A | 244 | 100% |  |  |  | Michael Martínez |  |  |
| 246 | 1.43.4 | Firma de Acta de Reunión | milestone | 0d | 2012-11-13 A | 2012-11-13 A | 245 | 100% |  |  |  | David Mauricio |  |  |
| 247 | 1.44 | Lanzamiento de Release 2 |  | 1d | 2012-11-15 A | 2012-11-19 A | 239 | 100% |  |  |  | Michael Martínez | 8h | 8h |
| 248 | 1.45 | Cierre final del Proyecto |  | 1d | 2012-11-19 | 2012-11-20 | 247 |  | 5.6d | 0.6d |  | Michael Martínez | 8h |  |
| 249 | 1.46 | Envío de Memoria del Proyecto a Gerencia |  | 1d | 2012-11-22 | 2012-11-22 | 248 |  | 5d |  | start no earlier than 2012-11-22 | Michael Martínez | 8h |  |
| 250 | 1.47 | Entrega de Poster del Proyecto | milestone | 0d | 2012-12-06 | 2012-12-06 | 249 |  | 0d |  | start no earlier than 2012-12-06 | Michael Martínez |  |  |
| 251 | 1.48 | Presentación Final del Taller de Proyecto 2 |  | 1d | 2012-12-06 | 2012-12-06 | 250 |  | 0d |  |  | Michael Martínez | 8h |  |
